# Écran LCD

Schedule from MS Project, 2019-03-18 to 2019-05-10, status date 2019-01-31, costs in $, A marks actual dates.
Cegep Limoilou

## Calendars

- Standard: Mon-Fri 08:00-12:00, 13:00-18:00; Sat-Sun off.

## Resources

| Resource | Rate |
| --- | --- |
| Charles | 23 |
| Pascal | 23 |

## Schedule

| ID | WBS | Task | Type | Duration | Start | Finish | Predecessors | Complete | Remaining | Baseline start | Baseline finish | Baseline duration | Total slack | Resources | Work | Actual work | Cost | Baseline cost | Actual cost |
| --- | --- | --- | --- | --- | --- | --- | --- | --- | --- | --- | --- | --- | --- | --- | --- | --- | --- | --- | --- |
| 1 | 1 | **Documentation & Gestion** |  | 4d | 2019-03-18 A | 2019-03-21 |  | 46% | 2.15d | 2019-03-18 | 2019-03-21 | 4d | 0d |  | 128h | 59.04h | 2,944 | 2,944 | 1,357.92 |
| 2 | 1.1 | Lecture des datasheets |  | 1d | 2019-03-18 A | 2019-03-18 | 9, 10 | 99% | 0.01d | 2019-03-18 | 2019-03-18 | 1d | 3d | Charles; Pascal | 16h | 15.84h | 368 | 368 | 364.32 |
| 3 | 1.2 | Lecture des projets précédents | milestone | 0d | 2019-03-18 A | 2019-03-18 A | 2 | 100% |  | 2019-03-18 | 2019-03-18 | 0d |  | Charles; Pascal |  |  |  |  |  |
| 4 | 1.3 | Compréhension VHDL |  | 3d | 2019-03-18 A | 2019-03-21 | 3 | 90% | 0.3d | 2019-03-18 | 2019-03-21 | 3d | 0d | Charles; Pascal | 48h | 43.2h | 1,104 | 1,104 | 993.6 |
| 5 | 1.4 | **Rapports** |  | 4d | 2019-03-18 A | 2019-03-21 |  |  | 4d | 2019-03-18 | 2019-03-21 | 4d | 0d |  | 64h |  | 1,472 | 1,472 |  |
| 6 | 1.4.1 | Rapport préliminaire | milestone | 0d | 2019-03-18 A | 2019-03-18 A |  | 100% |  | 2019-03-18 | 2019-03-18 | 0d |  | Charles; Pascal |  |  |  |  |  |
| 7 | 1.4.2 | Rapport final |  | 4d | 2019-03-18 | 2019-03-21 |  |  |  | 2019-03-18 | 2019-03-21 | 4d | 0d | Charles; Pascal | 64h |  | 1,472 | 1,472 |  |
| 8 | 1.5 | **Planification du projet** |  | 0d | 2019-03-18 A | 2019-03-18 A |  | 100% |  | 2019-03-18 | 2019-03-18 | 0d |  |  |  |  |  |  |  |
| 9 | 1.5.1 | Diagramme WBS | milestone | 0d | 2019-03-18 A | 2019-03-18 A |  | 100% |  | 2019-03-18 | 2019-03-18 | 0d |  | Pascal |  |  |  |  |  |
| 10 | 1.5.2 | Diagramme de Gantt | milestone | 0d | 2019-03-18 A | 2019-03-18 A |  | 100% |  | 2019-03-18 | 2019-03-18 | 0d |  | Charles; Pascal |  |  |  |  |  |
| 11 | 2 | **Alimentation** |  | 4d | 2019-03-21 A | 2019-03-27 A | 1 | 100% |  | 2019-03-21 | 2019-03-27 | 4d |  |  | 40h | 40h | 920 | 1,840 | 920 |
| 12 | 2.1 | Alimentation à découpage |  | 2d | 2019-03-21 A | 2019-03-25 A |  | 100% |  | 2019-03-21 | 2019-03-25 | 2d |  | Charles | 16h | 16h | 368 | 736 | 368 |
| 13 | 2.2 | Source d'alimentation. Alimentation 5V |  | 1d | 2019-03-25 A | 2019-03-26 A | 12 | 100% |  | 2019-03-25 | 2019-03-26 | 1d |  | Charles | 8h | 8h | 184 | 368 | 184 |
| 14 | 2.3 | Alimentation 3.3V |  | 1d | 2019-03-26 A | 2019-03-27 A | 13 | 100% |  | 2019-03-26 | 2019-03-27 | 1d |  | Charles | 8h | 8h | 184 | 368 | 184 |
| 15 | 2.4 | Alimentation 2.5V | milestone | 0d | 2019-03-26 A | 2019-03-26 A | 13 | 100% |  | 2019-03-26 | 2019-03-26 | 0d |  | Charles |  |  |  |  |  |
| 16 | 2.5 | Alimentation 1.2V | milestone | 0d | 2019-03-26 A | 2019-03-26 A | 13 | 100% |  | 2019-03-26 | 2019-03-26 | 0d |  | Charles |  |  |  |  |  |
| 17 | 2.6 | Alimentation bias |  | 1d | 2019-03-26 A | 2019-03-27 A | 13 | 100% |  | 2019-03-26 | 2019-03-27 | 1d |  | Charles | 8h | 8h | 184 | 368 | 184 |
| 18 | 3 | **Communication** |  | 9d | 2019-03-21 A | 2019-04-02 | 1 | 88% | 1.12d | 2019-03-21 | 2019-04-01 | 8d | 0d |  | 72h | 60h | 1,656 | 1,104 | 1,380 |
| 19 | 3.1 | **Communication Parallèle** |  | 1d | 2019-03-21 A | 2019-03-22 A |  | 100% |  | 2019-03-21 | 2019-03-22 | 1d |  |  | 24h | 24h | 552 | 368 | 552 |
| 20 | 3.1.1 | Schéma |  | 1d | 2019-03-21 A | 2019-03-22 A |  | 100% |  |  |  |  |  | Pascal | 8h | 8h | 184 |  | 184 |
| 21 | 3.1.2 | Protocole |  | 1d | 2019-03-21 A | 2019-03-22 A | 1 | 100% |  | 2019-03-21 | 2019-03-22 | 1d |  | Charles; Pascal | 16h | 16h | 368 | 368 | 368 |
| 22 | 3.2 | **Communication I²C** |  | 1d | 2019-03-22 A | 2019-03-25 | 19 | 88% | 0.12d | 2019-03-22 | 2019-03-25 | 1d | 0d |  | 24h | 20h | 552 | 368 | 460 |
| 23 | 3.2.1 | Schéma |  | 1d | 2019-03-22 A | 2019-03-25 A |  | 100% |  |  |  |  |  | Pascal | 8h | 8h | 184 |  | 184 |
| 24 | 3.2.2 | Protocole |  | 1d | 2019-03-22 A | 2019-03-25 | 1 | 75% | 0.25d | 2019-03-22 | 2019-03-25 | 1d | 0d | Charles; Pascal | 16h | 12h | 368 | 368 | 276 |

| ID | WBS | Task | Type | Duration | Start | Finish | Predecessors | Complete | Remaining | Baseline start | Baseline finish | Baseline duration | Total slack | Free slack | Constraint | Resources | Work | Actual work | Cost | Baseline cost | Actual cost |
| --- | --- | --- | --- | --- | --- | --- | --- | --- | --- | --- | --- | --- | --- | --- | --- | --- | --- | --- | --- | --- | --- |
| 25 | 3.3 | **Communication USB** |  | 7d | 2019-03-25 A | 2019-04-02 | 22 | 75% | 1.75d | 2019-03-25 | 2019-04-01 | 6d | 0d |  |  |  | 24h | 16h | 552 | 368 | 368 |
| 26 | 3.3.1 | Schéma |  | 1d | 2019-03-25 A | 2019-03-26 A |  | 100% |  |  |  |  |  |  |  | Charles | 8h | 8h | 184 |  | 184 |
| 27 | 3.3.2 | Conversion vers UART | milestone | 0d | 2019-04-02 A | 2019-04-02 A | 69 | 100% |  | 2019-04-01 | 2019-04-01 | 0d |  |  |  | Charles; Pascal |  |  |  |  |  |
| 28 | 3.3.3 | Protocole |  | 1d | 2019-03-25 A | 2019-03-26 | 1 | 50% | 0.5d | 2019-03-25 | 2019-03-26 | 1d | 6d |  |  | Charles; Pascal | 16h | 8h | 368 | 368 | 184 |
| 29 | 4 | **FPGA** |  | 13d | 2019-04-02 A | 2019-04-18 | 18, 1, 64 | 77% | 2.95d | 2019-04-02 | 2019-04-23 | 16.38d | 5.5d | 5d |  |  | 160h | 121.6h | 3,680 | 4,945 | 2,796.8 |
| 30 | 4.1 | **Réception de données** |  | 5d | 2019-04-02 A | 2019-04-08 |  | 60% | 2d | 2019-04-02 | 2019-04-08 | 4d | 0d |  |  |  | 40h | 24h | 920 | 736 | 552 |
| 31 | 4.1.1 | Conversion selon protocole |  | 2d | 2019-04-02 A | 2019-04-04 | 19, 22, 25 | 75% | 0.5d | 2019-04-02 | 2019-04-04 | 2d | 1.5d | 0d |  | Pascal | 16h | 12h | 368 | 368 | 276 |
| 32 | 4.1.2 | Réception des commandes |  | 3d | 2019-04-04 A | 2019-04-08 | 31 | 50% | 1.5d | 2019-04-04 | 2019-04-08 | 2d | 0d |  |  | Charles | 24h | 12h | 552 | 368 | 276 |
| 33 | 4.2 | **Écriture des données** |  | 4d | 2019-04-09 A | 2019-04-12 | 30 | 65% | 1.4d | 2019-04-08 | 2019-04-11 | 4d | 9.5d |  |  |  | 64h | 41.6h | 1,472 | 1,472 | 956.8 |
| 34 | 4.2.1 | Écriture |  | 2d | 2019-04-10 A | 2019-04-12 | 35 | 80% | 0.4d | 2019-04-09 | 2019-04-11 | 2d | 9.5d |  |  | Charles; Pascal | 32h | 25.6h | 736 | 736 | 588.8 |
| 35 | 4.2.2 | Traitement des commandes |  | 2d | 2019-04-09 A | 2019-04-10 |  | 50% | 1d | 2019-04-08 | 2019-04-09 | 2d | 1.6d | 0d |  | Charles; Pascal | 32h | 16h | 736 | 736 | 368 |
| 36 | 4.3 | **Transmission de données vers l'extérieur** |  | 1d | 2019-04-09 A | 2019-04-09 A | 30 | 100% |  | 2019-04-08 | 2019-04-23 | 12.38d |  |  |  |  | 24h | 24h | 552 | 2,001 | 552 |
| 37 | 4.3.1 | Codes d'erreurs |  | 1d | 2019-04-09 A | 2019-04-09 A | 31 | 100% |  | 2019-04-08 | 2019-04-23 | 12.38d |  |  | start no earlier than 2019-03-25 | Pascal | 8h | 8h | 184 | 1,633 | 184 |
| 38 | 4.3.2 | Pavé tactile |  | 1d | 2019-04-09 A | 2019-04-09 A |  | 100% |  | 2019-04-08 | 2019-04-08 | 1d |  |  |  | Charles; Pascal | 16h | 16h | 368 | 368 | 368 |
| 39 | 4.4 | **Transmission de données vers l'écran** |  | 4d | 2019-04-12 A | 2019-04-18 A | 33 | 100% |  | 2019-04-11 | 2019-04-17 | 4d |  |  |  |  | 32h | 32h | 736 | 736 | 736 |
| 40 | 4.4.1 | Clock |  | 2d | 2019-04-12 A | 2019-04-16 A |  | 100% |  | 2019-04-11 | 2019-04-15 | 2d |  |  |  | Charles | 16h | 16h | 368 | 368 | 368 |
| 41 | 4.4.2 | Écriture des données |  | 2d | 2019-04-16 A | 2019-04-18 A | 40 | 100% |  | 2019-04-15 | 2019-04-17 | 2d |  |  |  | Charles | 16h | 16h | 368 | 368 | 368 |
| 42 | 5 | **µC** |  | 9d | 2019-04-24 A | 2019-05-06 | 18, 29, 55 | 64% | 3.24d | 2019-04-29 | 2019-05-09 | 9d | 5d |  |  |  | 128h | 70.4h | 2,944 | 2,944 | 1,619.2 |
| 43 | 5.1 | **STM** |  | 5d | 2019-04-30 A | 2019-05-06 | 49 | 98% | 0.1d | 2019-05-03 | 2019-05-09 | 5d | 5d |  |  |  | 56h | 54.4h | 1,288 | 1,288 | 1,251.2 |
| 44 | 5.1.1 | Commandes |  | 1d | 2019-05-01 A | 2019-05-01 A | 18, 46 | 100% |  | 2019-05-06 | 2019-05-06 | 1d |  |  |  | Charles; Pascal | 16h | 16h | 368 | 368 | 368 |
| 45 | 5.1.2 | Gestion d'erreurs | milestone | 0d | 2019-04-30 A | 2019-04-30 A | 37, 46 | 100% |  | 2019-05-03 | 2019-05-03 | 0d |  |  |  | Pascal |  |  |  |  |  |
| 46 | 5.1.3 | Protocoles |  | 1d | 2019-04-30 A | 2019-04-30 | 18 | 90% | 0.1d | 2019-05-03 | 2019-05-03 | 1d | 9d |  |  | Charles; Pascal | 16h | 14.4h | 368 | 368 | 331.2 |
| 47 | 5.1.4 | Librairies |  | 2d | 2019-05-01 A | 2019-05-03 A | 55, 44 | 100% |  | 2019-05-06 | 2019-05-08 | 2d |  |  |  | Pascal | 16h | 16h | 368 | 368 | 368 |
| 48 | 5.1.5 | Pavé tactile |  | 1d | 2019-05-03 A | 2019-05-06 A | 47 | 100% |  | 2019-05-08 | 2019-05-09 | 1d |  |  |  | Pascal | 8h | 8h | 184 | 184 | 184 |

| ID | WBS | Task | Type | Duration | Start | Finish | Predecessors | Complete | Remaining | Baseline start | Baseline finish | Baseline duration | Total slack | Free slack | Resources | Work | Actual work | Cost | Baseline cost | Actual cost |
| --- | --- | --- | --- | --- | --- | --- | --- | --- | --- | --- | --- | --- | --- | --- | --- | --- | --- | --- | --- | --- |
| 49 | 5.2 | **Dallas** |  | 4d | 2019-04-24 A | 2019-04-30 |  | 30% | 2.8d | 2019-04-29 | 2019-05-03 | 4d | 0d |  |  | 72h | 16h | 1,656 | 1,656 | 368 |
| 50 | 5.2.1 | Librairies |  | 2d | 2019-04-26 | 2019-04-30 | 55, 51 |  |  | 2019-05-01 | 2019-05-03 | 2d | 0d |  | Charles; Pascal | 32h |  | 736 | 736 |  |
| 51 | 5.2.2 | Commandes |  | 1d | 2019-04-25 A | 2019-04-26 | 18, 52 | 50% | 0.5d | 2019-04-30 | 2019-05-01 | 1d | 0d |  | Charles; Pascal | 16h | 8h | 368 | 368 | 184 |
| 52 | 5.2.3 | Protocoles |  | 1d | 2019-04-24 | 2019-04-25 | 18 |  |  | 2019-04-29 | 2019-04-30 | 1d | 0.5d | 0d | Charles; Pascal | 16h |  | 368 | 368 |  |
| 53 | 5.2.4 | Gestion d'erreurs | milestone | 0d | 2019-04-25 | 2019-04-25 | 37, 52 |  |  | 2019-04-30 | 2019-04-30 | 0d | 2d | 0d | Pascal |  |  |  |  |  |
| 54 | 5.2.5 | Pavé tactile |  | 1d | 2019-04-25 A | 2019-04-26 A | 53 | 100% |  | 2019-04-30 | 2019-05-01 | 1d |  |  | Pascal | 8h | 8h | 184 | 184 | 184 |
| 55 | 6 | **Affichage** |  | 5d | 2019-04-18 A | 2019-04-24 A | 39, 29 | 100% |  | 2019-04-23 | 2019-04-29 | 5d |  |  |  | 72h | 72h | 1,656 | 1,472 | 1,656 |
| 56 | 6.1 | **Signaux de timing** |  | 1d | 2019-04-18 A | 2019-04-18 A |  | 100% |  | 2019-04-23 | 2019-04-23 | 1d |  |  |  | 8h | 8h | 184 | 184 | 184 |
| 57 | 6.1.1 | FRAME |  | 1d | 2019-04-18 A | 2019-04-18 A | 40 | 100% |  | 2019-04-23 | 2019-04-23 | 1d |  |  | Charles | 8h | 8h | 184 | 184 | 184 |
| 58 | 6.1.2 | SHIFT | milestone | 0d | 2019-04-18 A | 2019-04-18 A | 40 | 100% |  | 2019-04-23 | 2019-04-23 | 0d |  |  | Charles |  |  |  |  |  |
| 59 | 6.1.3 | LATCH | milestone | 0d | 2019-04-18 A | 2019-04-18 A | 40 | 100% |  | 2019-04-23 | 2019-04-23 | 0d |  |  | Charles |  |  |  |  |  |
| 60 | 6.1.4 | DF | milestone | 0d | 2019-04-18 A | 2019-04-18 A | 40 | 100% |  | 2019-04-23 | 2019-04-23 | 0d |  |  | Charles |  |  |  |  |  |
| 61 | 6.2 | **Envoi de données** |  | 4d | 2019-04-19 A | 2019-04-24 A | 56 | 100% |  | 2019-04-24 | 2019-04-29 | 4d |  |  |  | 64h | 64h | 1,472 | 1,288 | 1,472 |
| 62 | 6.2.1 | Lecture |  | 3d | 2019-04-19 A | 2019-04-23 A | 34 | 100% |  | 2019-04-24 | 2019-04-26 | 3d |  |  | Charles; Pascal | 48h | 48h | 1,104 | 1,104 | 1,104 |
| 63 | 6.2.2 | Inversion |  | 1d | 2019-04-23 A | 2019-04-24 A | 62, 35 | 100% |  | 2019-04-26 | 2019-04-29 | 1d |  |  | Pascal; Charles | 16h | 16h | 368 | 184 | 368 |
| 64 | 7 | **PCB & Boîtier** |  | 5d | 2019-03-27 A | 2019-04-02 | 11 | 97% | 0.14d | 2019-03-27 | 2019-04-02 | 5d | 0d |  |  | 58.56h | 58.56h | 1,346.88 | 2,024 | 1,346.88 |
| 65 | 7.1 | **Boîtier** |  | 1d | 2019-04-01 A | 2019-04-02 |  | 88% | 0.12d | 2019-04-01 | 2019-04-02 | 1d |  |  |  | 2.56h | 2.56h | 58.88 | 184 | 58.88 |
| 66 | 7.1.1 | Alignement mécanique |  | 1d | 2019-04-01 A | 2019-04-02 | 69 | 75% | 0.25d | 2019-04-01 | 2019-04-01 | 0d | 0d |  | Pascal |  |  |  |  |  |
| 67 | 7.1.2 | Bonne taille |  | 1d | 2019-04-01 A | 2019-04-02 A | 69 | 100% |  | 2019-04-01 | 2019-04-02 | 1d |  |  | Pascal | 2.56h | 2.56h | 58.88 | 184 | 58.88 |
| 68 | 7.2 | **PCB** |  | 5d | 2019-03-27 A | 2019-04-02 A |  | 100% |  | 2019-03-27 | 2019-04-01 | 4d |  |  |  | 40h | 40h | 920 | 1,472 | 920 |
| 69 | 7.2.1 | Design |  | 5d | 2019-03-27 A | 2019-04-02 A | 73 | 100% |  | 2019-03-27 | 2019-04-01 | 4d |  |  | Pascal | 40h | 40h | 920 | 1,472 | 920 |
| 70 | 7.3 | **Mesures de protection & debugging** |  | 1d | 2019-03-27 A | 2019-03-27 A |  | 100% |  | 2019-03-27 | 2019-03-27 | 1d |  |  |  | 16h | 16h | 368 | 368 | 368 |
| 71 | 7.3.1 | Éloignement entre alimentation et circuiterie sensible |  | 1d | 2019-03-27 A | 2019-03-27 A | 17 | 100% |  | 2019-03-27 | 2019-03-27 | 1d |  |  | Pascal | 8h | 8h | 184 | 184 | 184 |
| 72 | 7.3.2 | Test points |  | 1d | 2019-03-27 A | 2019-03-27 A | 17 | 100% |  | 2019-03-27 | 2019-03-27 | 1d |  |  | Pascal | 8h | 8h | 184 | 184 | 184 |
| 73 | 7.3.3 | LEDs de test | milestone | 0d | 2019-03-27 A | 2019-03-27 A | 17 | 100% |  | 2019-03-27 | 2019-03-27 | 0d |  |  | Pascal; Charles |  |  |  |  |  |

| ID | WBS | Task | Duration | Start | Finish | Predecessors | Complete | Baseline start | Baseline finish | Baseline duration | Resources | Work | Actual work | Cost | Baseline cost | Actual cost |
| --- | --- | --- | --- | --- | --- | --- | --- | --- | --- | --- | --- | --- | --- | --- | --- | --- |
| 74 | 8 | **Pavé tactile** | 5d | 2019-05-06 A | 2019-05-10 A | 55, 48, 54, 42 | 100% | 2019-05-09 | 2019-05-15 | 5d |  | 64h | 64h | 1,472 | 1,472 | 1,472 |
| 75 | 8.1 | Réception des données | 1d | 2019-05-06 A | 2019-05-07 A | 1 | 100% | 2019-05-09 | 2019-05-10 | 1d | Charles; Pascal | 16h | 16h | 368 | 368 | 368 |
| 76 | 8.2 | Conversion de données | 1d | 2019-05-07 A | 2019-05-08 A | 29, 75 | 100% | 2019-05-10 | 2019-05-13 | 1d | Charles; Pascal | 16h | 16h | 368 | 368 | 368 |
| 77 | 8.3 | Transmission des données | 1d | 2019-05-08 A | 2019-05-09 A | 76 | 100% | 2019-05-13 | 2019-05-14 | 1d | Charles; Pascal | 16h | 16h | 368 | 368 | 368 |
| 78 | 8.4 | Librairies & traitement | 2d | 2019-05-09 A | 2019-05-10 A | 77 | 100% | 2019-05-14 | 2019-05-15 | 2d | Pascal | 16h | 16h | 368 | 368 | 368 |
